# Cronograma de Implementacion

Schedule from MS Project, 2008-12-02 to 2009-01-31, costs in $b, A marks actual dates.

## Calendars

- Estándar: Mon-Fri 09:00-13:00, 15:00-19:00; Sat-Sun off. Exceptions (off unless hours are given): 2008-12-01 to 2008-12-05 08:00-09:00, 2008-12-06 09:00-13:00, 2008-12-08 to 2008-12-12 08:00-09:00, 2008-12-13 09:00-13:00, 2008-12-15 to 2008-12-19 08:00-09:00, 2008-12-20 09:00-13:00, 2008-12-22 to 2008-12-27 20:00-23:00, 2008-12-29 to 2009-01-03 20:00-23:00, 2009-01-05 to 2009-01-10 20:00-23:00, 2009-01-12 to 2009-01-17 20:00-23:00, 2009-01-19 to 2009-01-24 20:00-23:00, 2009-01-26 to 2009-01-31 20:00-23:00.

## Resources

| Resource | Rate |
| --- | --- |
| Sergio Moreno | 100 |
| Servidor |  |
| Licencias Microsoft |  |
| Sergio Morenoç |  |

## Schedule

| ID | WBS | Task | Duration | Start | Finish | Predecessors | Complete | Remaining | Baseline start | Baseline finish | Baseline duration | Total slack | Free slack | Constraint | Resources | Work | Actual work | Cost | Actual cost |
| --- | --- | --- | --- | --- | --- | --- | --- | --- | --- | --- | --- | --- | --- | --- | --- | --- | --- | --- | --- |
| 1 | 1 | **DATAWAREHOUSE MENDOCINA-PEDIDOS** | 16.75d | 2008-12-02 08:00 A | 2009-01-31 23:00 |  | 62% | 6.35d |  |  |  | 0d |  |  |  | 328h | 266.64h | 32,800 | 26,664.17 |
| 2 | 1.1 | **Diseño de la Extraccion de Datos** | 9.75d | 2008-12-02 08:00 A | 2009-01-10 21:00 |  | 98% | 0.2d | 2008-12-02 08:00 | 2008-12-20 11:00 | 3d | 6.57d |  |  | Sergio Moreno | 102h | 99.88h | 10,200 | 9,987.5 |
| 3 | 1.1.1 | Configuracion inicial ambiente de desarrollo | 4h | 2008-12-02 08:00 A | 2008-12-05 09:00 A |  | 100% |  | 2008-12-02 08:00 | 2008-12-05 09:00 | 4h |  |  |  | Sergio Moreno | 4h | 4h | 400 | 400 |
| 4 | 1.1.2 | Maestro de Artículos | 1h | 2008-12-06 09:00 A | 2008-12-06 10:00 A | 3 | 100% |  | 2008-12-06 09:00 | 2008-12-06 10:00 | 1h |  |  |  | Sergio Moreno | 1h | 1h | 100 | 100 |
| 5 | 1.1.3 | Maestro de Distribuidores | 1h | 2008-12-06 10:00 A | 2008-12-06 11:00 A | 4 | 100% |  | 2008-12-06 10:00 | 2008-12-06 11:00 | 1h |  |  |  | Sergio Moreno | 1h | 1h | 100 | 100 |
| 6 | 1.1.4 | Maestro de Vendedores | 1h | 2008-12-06 11:00 A | 2008-12-06 12:00 A | 5 | 100% |  | 2008-12-06 11:00 | 2008-12-06 12:00 | 1h |  |  |  | Sergio Moreno | 1h | 1h | 100 | 100 |
| 7 | 1.1.5 | Maestro de Sabores | 1h | 2008-12-06 12:00 A | 2008-12-06 13:00 A | 6 | 100% |  | 2008-12-06 12:00 | 2008-12-06 13:00 | 1h |  |  |  | Sergio Moreno | 1h | 1h | 100 | 100 |
| 8 | 1.1.6 | Maestro de Líneas | 1h | 2008-12-08 08:00 A | 2008-12-08 09:00 A | 7 | 100% |  | 2008-12-08 08:00 | 2008-12-08 09:00 | 1h |  |  |  | Sergio Moreno | 1h | 1h | 100 | 100 |
| 9 | 1.1.7 | Maestro de Distritos | 1h | 2008-12-09 08:00 A | 2008-12-09 09:00 A | 8 | 100% |  | 2008-12-09 08:00 | 2008-12-09 09:00 | 1h |  |  |  | Sergio Moreno | 1h | 1h | 100 | 100 |
| 10 | 1.1.8 | Maestro de Rutas | 1h | 2008-12-10 08:00 A | 2008-12-10 09:00 A | 9 | 100% |  | 2008-12-10 08:00 | 2008-12-10 09:00 | 1h |  |  |  | Sergio Moreno | 1h | 1h | 100 | 100 |
| 11 | 1.1.9 | Maestro de Sectores | 1h | 2008-12-11 08:00 A | 2008-12-11 09:00 A | 10 | 100% |  | 2008-12-11 08:00 | 2008-12-11 09:00 | 1h |  |  |  | Sergio Moreno | 1h | 1h | 100 | 100 |
| 12 | 1.1.10 | Maestro de Clientes | 1h | 2008-12-12 08:00 A | 2008-12-12 09:00 A | 11 | 100% |  | 2008-12-12 08:00 | 2008-12-12 09:00 | 1h |  |  |  | Sergio Moreno | 1h | 1h | 100 | 100 |
| 13 | 1.1.11 | Maestro Clientes - Precios | 1h | 2008-12-13 09:00 A | 2008-12-13 10:00 A | 12 | 100% |  | 2008-12-13 09:00 | 2008-12-13 10:00 | 1h |  |  |  | Sergio Moreno | 1h | 1h | 100 | 100 |
| 14 | 1.1.12 | Transaccional de Pedidos | 4h | 2008-12-13 10:00 A | 2008-12-15 09:00 A | 13 | 100% |  | 2008-12-13 10:00 | 2008-12-15 09:00 | 4h |  |  |  | Sergio Moreno | 4h | 4h | 400 | 400 |
| 15 | 1.1.13 | Transaccional de Visitas Palm | 1h | 2008-12-16 08:00 A | 2008-12-16 09:00 A | 14 | 100% |  |  |  |  |  |  |  | Sergio Moreno | 1h | 1h | 100 | 100 |
| 16 | 1.1.14 | Transaccional de Resumen de Preventa | 1h | 2008-12-17 08:00 A | 2008-12-17 09:00 A | 15 | 100% |  |  |  |  |  |  |  | Sergio Moreno | 1h | 1h | 100 | 100 |
| 17 | 1.1.15 | Transaccional de rechazos de pedidos | 1h | 2008-12-18 08:00 A | 2008-12-18 09:00 | 16 | 50% | 0.5h |  |  |  | 13.69d | 9.25d |  | Sergio Moreno | 1h | 0.5h | 100 | 50 |
| 18 | 1.1.16 | Maestro de hojas de ruta | 1h | 2008-12-19 08:00 A | 2008-12-19 09:00 A | 17 | 100% |  |  |  |  |  |  |  | Sergio Moreno | 1h | 1h | 100 | 100 |
| 19 | 1.1.17 | Maestro de empleados | 1h | 2009-01-10 20:00 A | 2009-01-10 21:00 A | 18 | 100% |  |  |  |  |  |  | start no earlier than 2009-01-10 09:00 | Sergio Moreno | 1h | 1h | 100 | 100 |
| 20 | 1.1.18 | Maestro de Motivos de Rechazo | 1h | 2009-01-10 09:00 A | 2009-01-10 21:00 A | 19 | 100% |  | 2008-12-16 08:00 | 2008-12-20 11:00 | 6h |  |  |  | Sergio Moreno | 1h | 1h | 100 | 100 |
| 21 | 1.2 | **Diseño de la Transformacion de Datos** | 9.12d | 2008-12-20 11:00 A | 2009-01-17 22:00 | 20 | 92% | 0.73d | 2008-12-20 11:00 | 2008-12-29 22:00 | 2.75d | 4.62d |  |  | Sergio Moreno | 97h | 90.76h | 9,700 | 9,076 |
| 22 | 1.2.1 | Dimension de Fecha | 3h | 2008-12-20 11:00 A | 2008-12-22 21:00 A |  | 100% |  | 2008-12-20 11:00 | 2008-12-22 21:00 | 3h |  |  |  | Sergio Moreno | 3h | 3h | 300 | 300 |
| 23 | 1.2.2 | Dimension de Clientes | 6h | 2008-12-22 21:00 A | 2008-12-24 21:00 A | 22 | 100% |  | 2008-12-22 21:00 | 2008-12-24 21:00 | 6h |  |  |  | Sergio Moreno | 6h | 6h | 600 | 600 |
| 24 | 1.2.3 | Dimension Distrito Ruta Sector | 2h | 2008-12-24 21:00 A | 2008-12-24 23:00 A | 23 | 100% |  | 2008-12-24 21:00 | 2008-12-24 23:00 | 2h |  |  |  | Sergio Moreno | 2h | 2h | 200 | 200 |
| 25 | 1.2.4 | Dimension Linea Sabor Articulo | 2h | 2008-12-25 20:00 A | 2008-12-25 22:00 A | 24 | 100% |  | 2008-12-25 20:00 | 2008-12-25 22:00 | 2h |  |  |  | Sergio Moreno | 2h | 2h | 200 | 200 |
| 26 | 1.2.5 | Dimension Distribuidor | 1h | 2008-12-25 22:00 A | 2008-12-25 23:00 A | 25 | 100% |  | 2008-12-25 22:00 | 2008-12-25 23:00 | 1h |  |  |  | Sergio Moreno | 1h | 1h | 100 | 100 |
| 27 | 1.2.6 | Dimension Estado de pedido | 1h | 2008-12-26 20:00 A | 2008-12-26 21:00 A | 26 | 100% |  | 2008-12-26 20:00 | 2008-12-26 21:00 | 1h |  |  |  | Sergio Moreno | 1h | 1h | 100 | 100 |
| 28 | 1.2.7 | Dimension Jefe Supervisor Vendedor | 2h | 2008-12-26 21:00 A | 2009-01-10 21:24 | 27 | 80% | 0.4h | 2008-12-26 21:00 | 2008-12-26 23:00 | 2h | 6.95d |  |  | Sergio Moreno | 2h | 1.6h | 200 | 160 |
| 29 | 1.2.8 | Tabla de Hechos: Pedidos | 5h | 2008-12-27 20:00 A | 2008-12-29 22:00 A | 28 | 100% |  | 2008-12-27 20:00 | 2008-12-29 22:00 | 5h |  |  |  | Sergio Moreno | 5h | 5h | 500 | 500 |
| 30 | 1.2.9 | Tabla de Hechos: Hojas de Ruta | 2h | 2008-12-29 09:00 A | 2008-12-29 22:00 A | 18 | 100% |  |  |  |  |  |  |  | Sergio Moreno | 2h | 2h | 200 | 200 |
| 31 | 1.2.10 | Tabla de Hechos: Resumen de Preventa | 2h | 2009-01-03 09:00 A | 2009-01-03 22:00 A | 16 | 100% |  |  |  |  |  |  |  |  |  |  |  |  |
| 32 | 1.2.11 | Tabla de Hechos: Visitas Palm | 2h | 2009-01-05 09:00 A | 2009-01-05 22:00 A | 15 | 100% |  |  |  |  |  |  |  |  |  |  |  |  |
| 33 | 1.2.12 | Tabla de Hechos: Rechazos de Pedidos | 2h | 2009-01-17 20:00 | 2009-01-17 22:00 | 17 |  |  |  |  |  | 4.68d | 0.12d | start no earlier than 2009-01-17 09:00 |  |  |  |  |  |

Notes:
- 23: hubo un atraso debido a que no se proporciono la informacion correcta en una de las tablas y esto provoco que se tenga que ir nuevamente a hacer el diseno de extraccion de esta nueva tabla
- 24: se tienen algunas dudas que deben ser aclaradas antes del diseno de las dimensiones correspondientes / se evidencio que en los pedidos no se estaba registrando el sector, por lo que se tiene que disenar un proceso adicional de reconstruccion de información historica a traves de iuna tabla adicional que si contiene el sector por fecha, (para la información de aquí atrás), en cuanto a la indformacion generada de aquí adelante, se hablo con el resposable de sistemas para que se corrja la falta de este dato en los pedidos, el mismo se comprometio a corregirlo en la semana del 22 al 27 de diciembre.
- 26: Se esta esperando que en el sistema principal para poder identificar jerarquia de supervisor vs. vendedor
- 27: Existían una duda con un campo repetido (consignación, crédito o facturado) que se aclaró el 27 de diciembre.
- 28: Se esta esperando que en el sistema principal para poder identificar jerarquia de supervisor vs. vendedor

| ID | WBS | Task | Duration | Start | Finish | Predecessors | Complete | Remaining | Baseline start | Baseline finish | Baseline duration | Total slack | Free slack | Constraint | Resources | Work | Actual work | Cost | Actual cost |
| --- | --- | --- | --- | --- | --- | --- | --- | --- | --- | --- | --- | --- | --- | --- | --- | --- | --- | --- | --- |
| 34 | 1.3 | **Diseño del cargado de datos** | 6.75d | 2008-12-30 09:00 A | 2009-01-19 23:00 |  | 89% | 0.77d | 2008-12-29 22:00 | 2009-01-01 23:00 | 1.25d | 4.12d |  |  | Sergio Moreno | 53h | 47.31h | 5,300 | 4,730.67 |
| 35 | 1.3.1 | Cubo: PEDIDOS | 3h | 2008-12-31 21:00 A | 2009-01-01 21:00 A | 29 | 100% |  | 2008-12-29 22:00 | 2008-12-31 21:00 | 5h |  |  |  | Sergio Moreno | 3h | 3h | 300 | 300 |
| 36 | 1.3.2 | Cubo Hojas de Ruta | 2h | 2008-12-30 09:00 A | 2008-12-30 22:00 A | 30 | 100% |  |  |  |  |  |  |  |  |  |  |  |  |
| 37 | 1.3.3 | Cubo de Resumen de Preventa | 2h | 2009-01-09 09:00 A | 2009-01-09 22:00 A | 31 | 100% |  |  |  |  |  |  |  |  |  |  |  |  |
| 38 | 1.3.4 | Cubo de Visitas Palm | 3h | 2009-01-12 09:00 A | 2009-01-12 23:00 A | 32 | 100% |  |  |  |  |  |  |  |  |  |  |  |  |
| 39 | 1.3.5 | Cubo de Pedidos con la adicion del Rechazo de pedidos | 3h | 2009-01-18 09:00 A | 2009-01-19 23:00 | 33 | 51% | 1.48h |  |  |  | 4.12d |  |  |  |  |  |  |  |
| 40 | 1.4 | **Diseño de Informes en excel** | 5.81d | 2009-01-02 09:00 A | 2009-01-20 21:30 |  | 40% | 3.49d | 2009-01-02 20:00 | 2009-01-02 22:00 | 0.25d | 3.94d |  |  | Sergio Moreno | 48h | 20.1h | 4,800 | 2,010 |
| 41 | 1.4.1 | Layout de ejemplo del Cubo: PEDIDOS | 1.5h | 2009-01-02 09:00 A | 2009-01-02 21:30 A | 35 | 100% |  | 2009-01-02 20:00 | 2009-01-02 22:00 | 2h |  |  |  | Sergio Moreno | 1.5h | 1.5h | 150 | 150 |
| 42 | 1.4.2 | Layout de ejemplo de Cubo Hojas de Ruta | 1.5h | 2009-01-04 09:00 A | 2009-01-05 21:30 A | 35 | 100% |  |  |  |  |  |  |  |  |  |  |  |  |
| 43 | 1.4.3 | Layout de ejemplo de Cubo de Resumen de Preventa | 1.5h | 2009-01-14 20:00 | 2009-01-14 21:30 | 36 |  |  |  |  |  | 6.05d |  | start no earlier than 2009-01-14 09:00 |  |  |  |  |  |
| 44 | 1.4.4 | Layout de ejemplo de Cubo de Visitas Palm | 1.5h | 2009-01-13 20:00 | 2009-01-13 21:30 | 37 |  |  |  |  |  | 6.42d |  | start no earlier than 2009-01-13 09:00 |  |  |  |  |  |
| 45 | 1.4.5 | Layout de ejemplo de Cubo de Pedidos con la adicion de Rechazo de pedidos | 1.5h | 2009-01-20 20:00 | 2009-01-20 21:30 | 38 |  |  |  |  |  | 2.89d | 0d | start no earlier than 2009-01-20 09:00 |  |  |  |  |  |
| 46 | 1.5 | Instalacion y configuracion del nuevo servidor | 8h | 2009-01-05 20:00 A | 2009-01-07 22:00 |  | 70% | 2.4h | 2009-01-07 22:00 | 2009-01-10 21:00 | 8h | 8d |  |  | Sergio Moreno | 8h | 5.6h | 800 | 560 |
| 47 | 1.6 | Elaboracion de Manual y Presentacion a los usuarios | 15h | 2009-01-12 09:00 A | 2009-01-16 23:00 |  | 20% | 12h | 2009-01-10 21:00 | 2009-01-15 21:00 | 12h | 4.88d |  | finish no earlier than 2009-01-16 19:00 | Sergio Moreno | 15h | 3h | 1,500 | 300 |
| 48 | 1.7 | Presentacion y entrega de las capacidades de la nueva herramienta sin cubo pedido con la adicion de rechazo | 2h | 2009-01-17 20:00 | 2009-01-17 22:00 |  |  |  | 2009-01-15 21:00 | 2009-01-15 22:00 | 1h | 4.38d | 2d | start no earlier than 2009-01-17 09:00 | Sergio Moreno | 2h |  | 200 |  |
| 49 | 1.8 | Presentacion y entrega de las capacidades de la nueva herramienta con correcciones y con cubo de pedido con la adicion de rechazos | 2h | 2009-01-24 20:00 | 2009-01-24 22:00 | 48 |  |  |  |  |  | 2.38d |  | start no earlier than 2009-01-24 09:00 |  |  |  |  |  |
| 50 | 1.9 | Elaboracion de la presentacion para la capacitacion en el uso del excel 2007 | 6h | 2009-01-19 20:00 | 2009-01-20 23:00 |  |  |  |  |  |  | 3.75d |  | start no earlier than 2009-01-19 09:00 |  |  |  |  |  |
| 51 | 1.10 | Elaboracion de la power point para la presentacion final de la herramienta en base al manual | 6h | 2009-01-26 20:00 | 2009-01-27 23:00 |  |  |  |  |  |  | 1.5d |  | start no earlier than 2009-01-26 09:00 |  |  |  |  |  |
| 52 | 1.11 | Capacitacion a usuarios finales para explotacion usando Excel 2007a | 3h | 2009-01-30 20:00 | 2009-01-30 23:00 |  |  |  |  |  |  | 0.38d |  | start no earlier than 2009-01-30 09:00 |  |  |  |  |  |
| 53 | 1.12 | Capacitacion a sistemas para mantenimiento de los flujos | 3h | 2009-01-31 20:00 | 2009-01-31 23:00 |  |  |  | 2009-02-03 22:00 | 2009-02-07 22:00 | 12h | 0d |  | start no earlier than 2009-01-31 09:00 | Sergio Moreno | 3h |  | 300 |  |
